# political_sentiment_project_plan

Schedule from MS Project, 2023-01-10 to 2023-04-25, A marks actual dates.

## Calendars

- Standard: Mon-Fri 08:00-12:00, 13:00-17:00; Sat-Sun off.

## Resources

| Resource |
| --- |
| Data Scientist |

## Schedule

| ID | WBS | Task | Type | Duration | Start | Finish | Predecessors | Complete | Remaining | Total slack | Free slack | Deadline | Resources | Work | Actual work |
| --- | --- | --- | --- | --- | --- | --- | --- | --- | --- | --- | --- | --- | --- | --- | --- |
| 1 | 1 | **Data Science Project** |  | 76d | 2023-01-10 A | 2023-04-25 |  | 7% | 70.85d | -1d | 0d | 2023-04-24 |  | 1008h | 120h |
| 2 | 1.1 | **Business Understanding** |  | 8d | 2023-01-10 A | 2023-01-19 |  | 99% | 0d | 0d |  |  | Data Scientist | 128h | 120h |
| 3 | 1.1.1 | Write Project Charter |  | 7d | 2023-01-10 A | 2023-01-18 A |  | 100% |  |  |  |  | Data Scientist | 56h | 56h |
| 4 | 1.1.2 | Define Project Schedule |  | 1d | 2023-01-19 A | 2023-01-19 A | 3 | 100% |  |  |  |  | Data Scientist | 8h | 8h |
| 5 | 1.2 | **Data Acquisition & Understanding** |  | 28d | 2023-01-20 | 2023-02-28 | 2 |  |  | -1d | 0d |  |  | 272h |  |
| 6 | 1.2.1 | Research Data Sources |  | 10d | 2023-01-20 | 2023-02-02 | 4 |  |  | -1d | 0d |  | Data Scientist | 80h |  |
| 7 | 1.2.2 | Finalize Data Sources |  | 1d | 2023-02-03 | 2023-02-03 | 6 |  |  | -1d | 0d |  | Data Scientist | 8h |  |
| 8 | 1.2.3 | Update Project Plan | milestone | 1d | 2023-02-06 | 2023-02-06 | 7 |  |  | -1d | 0d |  | Data Scientist | 8h |  |
| 9 | 1.2.4 | Write Functions to Gather Sitemap Links |  | 3d | 2023-02-07 | 2023-02-09 | 8 |  |  | -1d | 0d |  | Data Scientist | 24h |  |
| 10 | 1.2.5 | Scrape Sitemaps |  | 2d | 2023-02-10 | 2023-02-13 | 9 |  |  | -1d | 0d |  | Data Scientist | 16h |  |
| 11 | 1.2.6 | Write Functions to Scrape Each Data Source |  | 3d | 2023-02-07 | 2023-02-09 | 7, 8 |  |  | 1d |  |  | Data Scientist | 24h |  |
| 12 | 1.2.7 | Scrape Web Data |  | 1d | 2023-02-14 | 2023-02-14 | 10, 11 |  |  | -1d | 0d |  | Data Scientist | 8h |  |
| 13 | 1.2.8 | Analyze Web Scraped Data |  | 2d | 2023-02-15 | 2023-02-16 | 12 |  |  | -1d | 0d |  | Data Scientist | 16h |  |
| 14 | 1.2.9 | **Clean Webscraped Data** |  | 2d | 2023-02-17 | 2023-02-20 |  |  |  | -1d | 0d |  |  | 40h |  |
| 15 | 1.2.9.1 | Check for Duplicates |  | 1d | 2023-02-17 | 2023-02-17 | 13 |  |  | 0d |  |  | Data Scientist | 8h |  |
| 16 | 1.2.9.2 | Remove Blank Rows |  | 1d | 2023-02-17 | 2023-02-17 | 13 |  |  | 0d |  |  | Data Scientist | 8h |  |
| 17 | 1.2.9.3 | Ensure Data Type Accuracy |  | 1d | 2023-02-17 | 2023-02-17 | 13 |  |  | 0d |  |  | Data Scientist | 8h |  |
| 18 | 1.2.9.4 | Combine Text Data for One Row, One Article |  | 2d | 2023-02-17 | 2023-02-20 | 13 |  |  | -1d | 0d |  | Data Scientist | 16h |  |
| 19 | 1.2.10 | Exploratory Data Analysis |  | 5d | 2023-02-21 | 2023-02-27 | 14 |  |  | -1d | 0d |  | Data Scientist | 40h |  |
| 20 | 1.2.11 | Update Project Plan | milestone | 1d | 2023-02-28 | 2023-02-28 | 19 |  |  | -1d | 0d |  | Data Scientist | 8h |  |
| 21 | 1.3 | **Modeling** |  | 16d | 2023-03-01 | 2023-03-22 | 5, 20 |  |  | -1d | 0d |  |  | 136h |  |
| 22 | 1.3.1 | Select Potential Models |  | 10d | 2023-03-01 | 2023-03-14 |  |  |  | -1d | 0d |  | Data Scientist | 80h |  |
| 23 | 1.3.2 | Develop Text Tokenization Datasets |  | 1d | 2023-03-01 | 2023-03-01 | 19 |  |  | 14d |  |  | Data Scientist | 8h |  |
| 24 | 1.3.3 | Feature Engineer |  | 2d | 2023-03-15 | 2023-03-16 | 22 |  |  | -1d | 0d |  | Data Scientist | 16h |  |
| 25 | 1.3.4 | Optimized Grid Search |  | 3d | 2023-03-17 | 2023-03-21 | 24 |  |  | -1d | 0d |  | Data Scientist | 24h |  |
| 26 | 1.3.5 | Analyze Model Metrics and Select Candidate Models |  | 1d | 2023-03-22 | 2023-03-22 | 25 |  |  | -1d | 0d |  | Data Scientist | 8h |  |

| ID | WBS | Task | Duration | Start | Finish | Predecessors | Total slack | Free slack | Resources | Work |
| --- | --- | --- | --- | --- | --- | --- | --- | --- | --- | --- |
| 27 | 1.4 | **Deployment** | 1d | 2023-03-23 | 2023-03-23 | 21 | -1d | 0d |  | 8h |
| 28 | 1.4.1 | Deploy Models with Vetiver | 1d | 2023-03-23 | 2023-03-23 |  | -1d | 0d | Data Scientist | 8h |
| 29 | 1.5 | **Dashboard Building** | 18d | 2023-03-24 | 2023-04-18 | 27 | 4d |  |  | 280h |
| 30 | 1.5.1 | Develop Shiny App Requirement | 4d | 2023-03-24 | 2023-03-29 | 28 | 4d | 0d | Data Scientist | 32h |
| 31 | 1.5.2 | Develop Shiny App | 14d | 2023-03-30 | 2023-04-18 | 30 | 4d |  | Data Scientist | 112h |
| 32 | 1.5.3 | Develop Power BI Requirements | 3d | 2023-03-24 | 2023-03-28 | 28 | 5d | 0d | Data Scientist | 24h |
| 33 | 1.5.4 | Develop Power BI Dashboard | 14d | 2023-03-29 | 2023-04-17 | 32 | 5d |  | Data Scientist | 112h |
| 34 | 1.6 | **Report Writing** | 23d | 2023-03-24 | 2023-04-25 | 27 | -1d | 0d |  | 184h |
| 35 | 1.6.1 | Develop Report Outline | 4d | 2023-03-24 | 2023-03-29 | 27 | -1d | 0d | Data Scientist | 32h |
| 36 | 1.6.2 | Write Report | 14d | 2023-03-30 | 2023-04-18 | 35 | -1d | 0d | Data Scientist | 112h |
| 37 | 1.6.3 | Develop RevealJS Presentation | 5d | 2023-04-19 | 2023-04-25 | 36 | -1d | 0d | Data Scientist | 40h |
